Schedule from MS Project, 2014-10-03 to 2014-11-26, A marks actual dates.

## Calendars

- Standard: Mon-Fri 08:00-12:00, 13:00-17:00; Sat-Sun off. Exceptions (off unless hours are given): 2014-11-01 to 2014-11-02 08:00-12:00, 13:00-17:00.

## Resources

| Resource |
| --- |
| Gabriel Alexandre |
| Vinicius Edmar |
| Cliente |
| Gabriel Alexandre Vinicius Edmar |
| Vinicius Alexandre |
| Alexandre Gabriel |
| Alexandre Vinicius |
| Alexandre Vinicuis |
| Alexandre Edmar |
| Cccc |
| Gabriel Vinicius |
| Daniel Alexandre |
| Edmar Gabriel |
| Daniel Vinicuis |
| Daniel Gabriel |
| Gabriel Alexandre Vinicius Edmar Daniel |
| Vinicius Daniel |
| Gabriel Daniel |
| Gabriel Edmar |
| Vinicuis Daniel |
| Alexandre |

## Schedule

| ID | WBS | Task | Type | Duration | Start | Finish | Predecessors | Complete | Remaining | Baseline start | Baseline finish | Baseline duration | Total slack | Constraint | Resources | Work | Actual work |
| --- | --- | --- | --- | --- | --- | --- | --- | --- | --- | --- | --- | --- | --- | --- | --- | --- | --- |
| 1 | 1 | **Proposta** |  | 20d | 2014-10-03 A | 2014-10-30 A |  | 100% |  | 2014-10-03 | 2014-10-30 | 20d |  |  |  | 160h | 160h |
| 2 | 1.1 | Reunião com o cliente |  | 1d | 2014-10-03 A | 2014-10-03 A |  | 100% |  | 2014-10-03 | 2014-10-03 | 1d |  | start no earlier than 2014-10-03 | Gabriel Daniel | 8h | 8h |
| 3 | 1.2 | Proposta técnica |  | 1d | 2014-10-06 A | 2014-10-06 A | 2 | 100% |  | 2014-10-06 | 2014-10-06 | 1d |  |  | Vinicius Edmar | 8h | 8h |
| 4 | 1.3 | Validação Proposta |  | 1d | 2014-10-07 A | 2014-10-07 A | 3 | 100% |  | 2014-10-07 | 2014-10-07 | 1d |  | start no earlier than 2014-10-03 | Cliente | 8h | 8h |
| 5 | 1.4 | Documento de Requisitos | manual | 14d | 2014-10-08 A | 2014-10-27 A | 4 | 100% |  | 2014-10-08 | 2014-10-27 | 14d |  |  | Gabriel Alexandre Vinicius Edmar Daniel | 112h | 112h |
| 6 | 1.5 | Validação de Documento de Requisitos |  | 1d | 2014-10-28 A | 2014-10-28 A | 5 | 100% |  | 2014-10-28 | 2014-10-28 | 1d |  | start no earlier than 2014-10-28 | Cliente | 8h | 8h |
| 7 | 1.6 | Matriz de Rastreabilidade |  | 2d | 2014-10-29 A | 2014-10-30 A | 6 | 100% |  | 2014-10-29 | 2014-10-30 | 2d |  |  | Vinicius Daniel | 16h | 16h |
| 8 | 2 | **Implementação** |  | 18d? | 2014-11-01 A | 2014-11-24 | 1 | 56% | 8d? | 2014-11-01 | 2014-11-24 | 18d? | 0d |  |  | 208h | 120h |
| 9 | 2.1 | Banco de dados Tela de Login |  | 1d | 2014-11-01 A | 2014-11-01 A | 6 | 100% |  | 2014-11-01 | 2014-11-01 | 1d |  | start no earlier than 2014-11-01 | Alexandre Gabriel | 8h | 8h |
| 10 | 2.2 | Tela de Login |  | 2d | 2014-11-02 A | 2014-11-03 A | 9 | 100% |  | 2014-11-02 | 2014-11-03 | 2d |  |  | Alexandre Gabriel | 16h | 16h |
| 11 | 2.3 | Banco de Dados Manter Jogos |  | 1d | 2014-11-01 A | 2014-11-01 A | 6 | 100% |  | 2014-11-01 | 2014-11-01 | 1d |  | start no earlier than 2014-11-01 | Alexandre Vinicius | 8h | 8h |
| 12 | 2.4 | Manter Jogos |  | 2d | 2014-11-02 A | 2014-11-03 A | 11 | 100% |  | 2014-11-02 | 2014-11-03 | 2d |  | start no earlier than 2014-11-02 | Alexandre Vinicuis | 16h | 16h |
| 13 | 2.5 | Banco de Dados Manter Usuários de Sistema |  | 1d | 2014-11-01 A | 2014-11-01 A | 7 | 100% |  | 2014-11-01 | 2014-11-01 | 1d |  | start no earlier than 2014-11-01 | Alexandre Edmar | 8h | 8h |
| 14 | 2.6 | Manter Usuários de Sistema |  | 2d | 2014-11-02 A | 2014-11-03 A | 13 | 100% |  | 2014-11-02 | 2014-11-03 | 2d |  |  | Alexandre Edmar | 16h | 16h |
| 15 | 2.7 | Testes Dunit |  | 1d | 2014-11-04 | 2014-11-04 | 10, 12, 14 |  |  | 2014-11-04 | 2014-11-04 | 1d | 14d |  | Alexandre Edmar | 8h |  |
| 16 | 2.8 | Banco de Dados Manter Funcionários |  | 1d | 2014-11-05 A | 2014-11-05 A | 7 | 100% |  | 2014-11-05 | 2014-11-05 | 1d |  | start no earlier than 2014-11-05 | Gabriel Vinicius | 8h | 8h |
| 17 | 2.9 | Manter Funcionários |  | 2d | 2014-11-06 A | 2014-11-07 A | 16 | 100% |  | 2014-11-06 | 2014-11-07 | 2d |  |  | Gabriel Vinicius | 16h | 16h |
| 18 | 2.10 | Banco de Dados Empresas |  | 1d | 2014-11-05 A | 2014-11-05 A | 6 | 100% |  | 2014-11-05 | 2014-11-05 | 1d |  | start no earlier than 2014-11-05 | Daniel Alexandre | 8h | 8h |
| 19 | 2.11 | Mater Empresas |  | 2d | 2014-11-06 A | 2014-11-07 A | 18 | 100% |  | 2014-11-06 | 2014-11-07 | 2d |  |  | Daniel Alexandre | 16h | 16h |
| 20 | 2.12 | Testes Dunit |  | 1d | 2014-11-10 | 2014-11-10 | 19, 17 |  |  | 2014-11-10 | 2014-11-10 | 1d | 10d |  | Gabriel Vinicius | 8h |  |
| 21 | 2.13 | Relatório de Jogos |  | 2d | 2014-11-13 | 2014-11-14 | 12 |  |  | 2014-11-13 | 2014-11-14 | 2d | 6d | start no earlier than 2014-11-13 | Daniel Vinicuis | 16h |  |
| 22 | 2.14 | Relatório de Usuário de Sistema |  | 2d | 2014-11-13 | 2014-11-14 | 14 |  |  | 2014-11-13 | 2014-11-14 | 2d | 6d | start no earlier than 2014-11-13 | Daniel Gabriel | 16h |  |
| 23 | 2.15 | Banco de Dados Manter Vendas |  | 1d | 2014-11-02 | 2014-11-02 |  |  |  | 2014-11-17 | 2014-11-17 | 1d | 11d | start no earlier than 2014-11-02 | Gabriel Edmar | 8h |  |
| 24 | 2.16 | Manter Vendas |  | 2d | 2014-11-18 | 2014-11-19 | 23 |  |  | 2014-11-18 | 2014-11-19 | 2d | 0d | start no earlier than 2014-11-18 | Gabriel Edmar | 16h |  |
| 25 | 2.17 | Relatório de Vendas |  | 2d | 2014-11-20 | 2014-11-21 | 24 |  |  | 2014-11-20 | 2014-11-21 | 2d | 0d |  | Vinicuis Daniel | 16h |  |
| 26 | 2.18 | Testes Dunit |  | 1d? | 2014-11-24 | 2014-11-24 | 25 |  |  | 2014-11-24 | 2014-11-24 | 1d? | 0d |  |  |  |  |

| ID | WBS | Task | Duration | Start | Finish | Predecessors | Baseline start | Baseline finish | Baseline duration | Total slack | Constraint | Resources | Work |
| --- | --- | --- | --- | --- | --- | --- | --- | --- | --- | --- | --- | --- | --- |
| 27 | 3 | **Finalização** | 2d | 2014-11-25 | 2014-11-26 | 8 | 2014-11-25 | 2014-11-26 | 2d |  |  |  | 16h |
| 29 | 3.1 | Melhorar Interface | 2d | 2014-11-25 | 2014-11-26 |  | 2014-11-25 | 2014-11-26 | 2d | 0d | start no earlier than 2014-11-25 | Alexandre | 16h |
